# Final Project Plan

Schedule from MS Project, 2016-01-04 to 2016-04-22, costs in €.
Microsoft Corporation

## Calendars

- Standard: Mon-Fri 09:00-12:00, 14:00-18:00; Sat-Sun off. Exceptions (off unless hours are given): 2016-01-06 (Epiphany), 2016-03-19 (Father day), 2016-03-25 (Saint Friday), 2016-03-27 (Pâques).

## Resources

| Resource | Rate |
| --- | --- |
| Stefan Vikoler | 45 |
| Filip Michnik | 35 |
| Wang Yongjian | 35 |
| Udeshkumar Ganesan | 35 |
| Amélie Lagadec | 35 |
| Overhead Expenses |  |
| General and Administrative Expenses |  |

## Schedule

| ID | WBS | Task | Duration | Start | Finish | Predecessors | Total slack | Constraint | Resources | Work | Cost | Role |
| --- | --- | --- | --- | --- | --- | --- | --- | --- | --- | --- | --- | --- |
| 1 | 1 | **Requirements** | 10d | 2016-01-04 | 2016-01-20 |  | 0d |  |  | 120h | 5,000 |  |
| 2 | 1.1 | Structured interviews with stakeholders | 2d | 2016-01-04 | 2016-01-07 |  | 0d | start no earlier than 2016-01-04 | Stefan Vikoler | 16h | 720 | Management |
| 3 | 1.2 | Software requirements | 2d | 2016-01-07 | 2016-01-11 | 2 | 0d |  | Filip Michnik; Stefan Vikoler | 32h | 1,280 | Management + 1 developer |
| 4 | 1.3 | Hardware requirements | 1d | 2016-01-11 | 2016-01-12 | 3 | 0d |  | Filip Michnik; Stefan Vikoler | 16h | 640 | Management + 1 developer |
| 5 | 1.4 | Functional and non-functional requirements | 2d | 2016-01-12 | 2016-01-14 | 4 | 0d |  | Filip Michnik; Stefan Vikoler | 32h | 1,280 | Management + 1 developer |
| 6 | 1.5 | Business rules | 1d | 2016-01-15 | 2016-01-18 | 5 | 0d |  | Stefan Vikoler | 8h | 360 | Management |
| 7 | 1.6 | Documentation | 2d | 2016-01-18 | 2016-01-20 | 6 | 0d |  | Stefan Vikoler | 16h | 720 | Management |
| 8 | 2 | **Analysis** | 9d | 2016-01-20 | 2016-02-03 |  | 0d |  |  | 65.6h | 2,632 |  |
| 9 | 2.1 | Requirement validation | 2d | 2016-01-20 | 2016-01-22 | 7 | 0d |  | Amélie Lagadec [50%]; Stefan Vikoler [50%] | 9.6h | 352 | Tester |
| 10 | 2.2 | Identify hardware and software constraints | 2d | 2016-01-22 | 2016-01-26 | 9 | 0d |  | Filip Michnik [50%]; Stefan Vikoler [50%] | 16h | 640 | Developer |
| 11 | 2.3 | Risk analysis | 1d | 2016-01-27 | 2016-01-28 | 10 | 0d |  | Stefan Vikoler | 8h | 360 | Management |
| 12 | 2.4 | Scenario analysis | 2d | 2016-01-28 | 2016-02-01 | 11 | 0d |  | Wang Yongjian [50%]; Stefan Vikoler [50%] | 16h | 640 | Designer |
| 13 | 2.5 | Use case model | 1d | 2016-02-01 | 2016-02-02 | 12 | 0d |  | Wang Yongjian | 8h | 280 | Designer |
| 14 | 2.6 | Documentation | 1d | 2016-02-02 | 2016-02-03 | 13 | 0d |  | Stefan Vikoler | 8h | 360 | Management |
| 15 | 3 | **Design** | 15d | 2016-02-03 | 2016-02-26 |  | 0d |  |  | 227.2h | 7,984 |  |
| 16 | 3.1 | Software product design | 3d | 2016-02-03 | 2016-02-09 | 14 | 0d |  | Wang Yongjian; Filip Michnik | 48h | 1,680 | Designer |
| 17 | 3.2 | UML models | 3d | 2016-02-09 | 2016-02-12 | 16 | 0d |  | Wang Yongjian; Filip Michnik | 48h | 1,680 | Designer |
| 18 | 3.3 | Software architecture | 2d | 2016-02-12 | 2016-02-16 | 17 | 0d |  | Filip Michnik; Wang Yongjian | 32h | 1,120 | Designer |
| 19 | 3.4 | Test plan | 2d | 2016-02-16 | 2016-02-19 | 18 | 0d |  | Filip Michnik; Wang Yongjian | 32h | 1,120 | Designer |
| 20 | 3.5 | Inspection plan | 1d | 2016-02-19 | 2016-02-22 | 19 | 0d |  | Filip Michnik; Wang Yongjian | 16h | 560 | Designer |
| 21 | 3.6 | Design validation and verification | 2d | 2016-02-22 | 2016-02-24 | 20 | 0d |  | Amélie Lagadec; Udeshkumar Ganesan | 32h | 1,120 | Tester |
| 22 | 3.7 | Documentation | 2d | 2016-02-24 | 2016-02-26 | 21 | 0d |  | Filip Michnik; Stefan Vikoler | 19.2h | 704 | Designer |
| 23 | 4 | **Development** | 25d | 2016-02-26 | 2016-04-08 |  | 0d |  |  | 387.2h | 13,584 |  |
| 24 | 4.1 | Coding | 17d | 2016-02-26 | 2016-03-28 | 22 | 0d |  | Filip Michnik; Wang Yongjian | 272h | 9,520 | Developer |
| 25 | 4.2 | Proving | 5d | 2016-03-28 | 2016-04-04 | 24 | 0d |  | Filip Michnik; Wang Yongjian | 80h | 2,800 | Developer |
| 26 | 4.3 | Integration | 1d | 2016-04-05 | 2016-04-06 | 25 | 0d |  | Filip Michnik; Wang Yongjian | 16h | 560 | Developer |
| 27 | 4.4 | Documentation | 2d | 2016-04-06 | 2016-04-08 | 26 | 9d |  | Wang Yongjian; Stefan Vikoler | 19.2h | 704 | Developer |

| ID | WBS | Task | Type | Duration | Start | Finish | Predecessors | Total slack | Free slack | Constraint | Resources | Work | Cost | Role |
| --- | --- | --- | --- | --- | --- | --- | --- | --- | --- | --- | --- | --- | --- | --- |
| 28 | 5 | **Testing** |  | 40d | 2016-02-12 | 2016-04-19 |  | 3d |  |  |  | 627.2h | 21,984 |  |
| 29 | 5.1 | Runs parallel to the development |  | 25d | 2016-02-26 | 2016-04-08 | 22 | 9d |  |  | Amélie Lagadec; Udeshkumar Ganesan | 400h | 14,000 | Tester |
| 30 | 5.2 | Unit test |  | 3d | 2016-02-12 | 2016-02-17 | 17 | 38d | 0d |  | Amélie Lagadec; Udeshkumar Ganesan | 48h | 1,680 | Tester |
| 31 | 5.3 | Model test |  | 2d | 2016-02-18 | 2016-02-22 | 30 | 38d |  |  | Amélie Lagadec; Udeshkumar Ganesan | 32h | 1,120 | Tester |
| 32 | 5.4 | Hardware test |  | 2d | 2016-04-05 | 2016-04-07 | 25 | 10d |  |  | Udeshkumar Ganesan; Amélie Lagadec | 32h | 1,120 | Tester |
| 33 | 5.5 | Integration test |  | 2d | 2016-04-06 | 2016-04-08 | 26 | 0d |  |  | Amélie Lagadec; Udeshkumar Ganesan | 32h | 1,120 | Tester |
| 34 | 5.6 | Beta test |  | 2d | 2016-04-08 | 2016-04-12 | 33 | 0d |  |  | Amélie Lagadec; Udeshkumar Ganesan | 32h | 1,120 | Tester |
| 35 | 5.7 | Debugging |  | 2d | 2016-04-12 | 2016-04-14 | 34 | 0d |  |  | Filip Michnik; Wang Yongjian | 32h | 1,120 | Developer |
| 36 | 5.8 | Documentation |  | 2d | 2016-04-15 | 2016-04-19 | 35 | 3d |  |  | Amélie Lagadec; Stefan Vikoler | 19.2h | 704 | Tester |
| 37 | 6 | **Deployment** |  | 5d | 2016-04-15 | 2016-04-22 |  | 0d |  |  |  | 73.6h | 2,592 |  |
| 38 | 6.1 | Installation |  | 1d | 2016-04-15 | 2016-04-18 | 35 | 0d |  |  | Filip Michnik; Wang Yongjian | 16h | 560 | Developer |
| 39 | 6.2 | Migration |  | 1d | 2016-04-18 | 2016-04-19 | 38 | 0d |  |  | Filip Michnik; Wang Yongjian | 16h | 560 | Developer |
| 40 | 6.3 | Support |  | 1d | 2016-04-19 | 2016-04-20 | 39 | 0d |  |  | Amélie Lagadec; Udeshkumar Ganesan | 16h | 560 | Tester |
| 41 | 6.4 | Maintenance |  | 1d | 2016-04-20 | 2016-04-21 | 40 | 0d |  |  | Filip Michnik; Wang Yongjian | 16h | 560 | Developer |
| 42 | 6.5 | Documentation |  | 1d | 2016-04-21 | 2016-04-22 | 41 | 0d |  |  | Filip Michnik; Stefan Vikoler | 9.6h | 352 | Developer |
| 43 | 7 | Overhead Expenses | milestone | 0d | 2016-04-22 | 2016-04-22 | 42 | 0d |  | start no earlier than 2016-04-22 | Overhead Expenses |  | 6,225.08 |  |
| 44 | 8 | General and Administrative Expenses | milestone | 0d | 2016-04-22 | 2016-04-22 | 43 | 0d |  | start no earlier than 2016-04-22 | General and Administrative Expenses |  | 15,000.27 |  |
